# Building

How a schedule from MS Project changed from version to version. A marks actual dates.

## Version 1 (saved 2021-04-16, file Building.mpp)

Note of the change: 4TRPO

| ID | WBS | Task | Duration | Start | Finish | Predecessors |
| --- | --- | --- | --- | --- | --- | --- |
| 1 |  | Начало проекта | 0d | 2014-03-01 | 2014-03-01 |  |
| 2 | 2 | **Утверждение проектов** | 1d? | 2014-03-01 | 2014-03-01 |  |
| 3 |  | Начало утверждения проектов | 0d | 2014-03-03 | 2014-03-03 | 1 |
| 4 |  | Утверждение проекта на строительство | 90d | 2014-03-03 | 2014-07-04 | 3 |
| 5 |  | Утверждение проекта на газ | 60d | 2014-03-03 | 2014-05-23 | 3 |
| 6 |  | Утверждение проекта на водопровод и канализацию | 30d | 2014-03-03 | 2014-04-11 | 3 |
| 7 |  | Утверждение проекта на отопление | 45d | 2014-03-03 | 2014-05-02 | 3 |
| 8 |  | Проекты утверждены | 0d | 2014-07-07 | 2014-07-07 | 4, 5, 6, 7 |
| 9 | 3 | **Строительство фундамента** | 1d? | 2014-03-01 | 2014-03-01 |  |
| 10 |  | Начало закладки фундамента | 0d | 2014-07-07 | 2014-07-07 | 8 |
| 11 |  | Рытье траншей | 10d | 2014-07-07 | 2014-07-18 | 10 |
| 12 |  | Заливка фундамента | 5d | 2014-07-21 | 2014-07-25 | 11 |
| 13 |  | Фундамент завершен | 0d | 2014-09-08 | 2014-09-08 | 12FS+30d |
| 14 | 4 | **Каркас и крыша** | 1d? | 2014-03-01 | 2014-03-01 |  |
| 15 |  | Начало каркаса | 0d | 2014-09-08 | 2014-09-08 | 13 |
| 16 |  | Кладка стен | 60d | 2014-09-08 | 2014-12-01 | 15 |
| 17 |  | Перекрытие стен | 15d | 2014-12-02 | 2014-12-22 | 16 |
| 18 |  | Установка крыши | 30d | 2014-12-23 | 2015-02-12 | 17 |
| 19 |  | Установка наружных дверей и окон | 7d | 2014-12-23 | 2015-01-12 | 17 |
| 20 |  | Установка полов | 5d | 2014-12-23 | 2014-12-29 | 17 |
| 21 |  | Каркас готов | 0d | 2015-02-13 | 2015-02-13 | 18, 19, 20 |
| 22 | 5 | **Коммуникации** | 1d? | 2014-03-01 | 2014-03-01 |  |
| 23 |  | Начало установки коммуникаций | 0d | 2015-02-13 | 2015-02-13 | 21 |
| 24 |  | Проведение и подключение водопровода и канализации | 10d | 2015-02-13 | 2015-02-26 | 23 |
| 25 |  | Установка и подключение электропроводки | 5d | 2015-02-13 | 2015-02-19 | 23 |
| 26 |  | Установка и подключение газовых коммуникаций | 5d | 2015-02-13 | 2015-02-19 | 23 |
| 27 |  | Коммуникации готовы | 0d | 2015-02-27 | 2015-02-27 | 24, 25, 26 |
| 28 | 6 | **Внутренняя отделка** | 1d? | 2014-03-01 | 2014-03-01 |  |
| 29 |  | Начало отделки | 0d | 2015-02-27 | 2015-02-27 | 27 |
| 30 |  | Внутренние двери | 10d | 2015-02-27 | 2015-03-12 | 29 |
| 31 |  | Навесные потолки | 5d | 2015-03-13 | 2015-03-19 | 30 |
| 32 |  | Отделка стен | 3d | 2015-03-13 | 2015-03-17 | 30 |
| 33 |  | Монтаж отопления | 10d | 2015-03-13 | 2015-03-26 | 30 |
| 34 |  | Установка оборудования, приборов и сантехники | 5d | 2015-03-27 | 2015-04-02 | 31, 33 |
| 35 |  | Настил полов | 15d | 2015-04-03 | 2015-04-23 | 32, 34 |
| 36 |  | Конец отделки | 0d | 2015-04-24 | 2015-04-24 | 35 |
| 37 |  | Конец проекта | 0d | 2015-04-24 | 2015-04-24 | 36 |

## Version 2 (saved 2021-05-07, file ГорбачАА_ТРПО_Лаб6.mpp)

Note of the change: 6'th AVM+ 7'th TRPO

Last finish 2015-04-24 → 2015-04-23 (-1d).

Changed:

| ID | Task | Start | Finish | Duration | Total float | Other |
| --- | --- | --- | --- | --- | --- | --- |
| 2 | **Утверждение проектов** |  | 2014-03-01 → 2014-07-04 (+125d) | 1d? → 90d | none → 0d |  |
| 3 | Начало утверждения проектов | 2014-03-03 → 2014-03-01 (-2d) | 2014-03-03 → 2014-03-01 (-2d) |  | none → 0d |  |
| 4 | Утверждение проекта на строительство |  |  |  | none → 0d | resources none → Архитектор |
| 5 | Утверждение проекта на газ |  | 2014-05-23 → 2014-07-04 (+42d) | 60d → 90d | none → 0d | resources none → МУП "Горгаз" |
| 6 | Утверждение проекта на водопровод и канализацию |  | 2014-04-11 → 2014-05-23 (+42d) | 30d → 60d | none → 30d | resources none → МУП "Водоканал" |
| 7 | Утверждение проекта на отопление |  | 2014-05-02 → 2014-07-04 (+63d) | 45d → 90d | none → 0d | resources none → АО "Водолей" |
| 8 | Проекты утверждены | 2014-07-07 → 2014-07-04 (-3d) | 2014-07-07 → 2014-07-04 (-3d) |  | none → 0d |  |
| 9 | **Строительство фундамента** | 2014-03-01 → 2014-07-04 (+125d) | 2014-03-01 → 2014-09-05 (+188d) | 1d? → 45d | none → 0d |  |
| 10 | Начало закладки фундамента | 2014-07-07 → 2014-07-04 (-3d) | 2014-07-07 → 2014-07-04 (-3d) |  | none → 0d |  |
| 11 | Рытье траншей |  |  |  | none → 0d | resources none → Рабочий1; Рабочий2; Рабочий3; Подсобник1; Подсобник2; Трактор |
| 12 | Заливка фундамента |  |  |  | none → 0d | resources none → Рабочий1; Рабочий2; Рабочий3; Подсобник1; Подсобник2; Песок [10 т]; Щебень [12.5 т]; Цемент [300%]; Доска необрезная [5 м3]; Доставка [0.1%] |
| 13 | Фундамент завершен | 2014-09-08 → 2014-09-05 (-3d) | 2014-09-08 → 2014-09-05 (-3d) |  | none → 0d |  |
| 14 | **Каркас и крыша** | 2014-03-01 → 2014-09-05 (+188d) | 2014-03-01 → 2015-02-12 (+348d) | 1d? → 105d | none → 0d |  |
| 15 | Начало каркаса | 2014-09-08 → 2014-09-05 (-3d) | 2014-09-08 → 2014-09-05 (-3d) |  | none → 0d |  |
| 16 | Кладка стен |  |  |  | none → 0d | resources none → Рабочий1; Рабочий2; Рабочий3; Подсобник1; Подсобник2; Песок [6 т]; Цемент [200000%]; Доставка [0.1%]; Кирпич [70000 шт] |
| 17 | Перекрытие стен |  |  |  | none → 0d | resources none → Рабочий1; Рабочий2; Рабочий3; Подсобник1; Подсобник2; Доставка [0.1%]; Брус; Доска обрезная [7 м3] |
| 18 | Установка крыши |  |  |  | none → 0d | resources none → Плотник1; Плотник2; Доска необрезная [10 м3]; Шифер; Доставка [0.1%] |
| 19 | Установка наружных дверей и окон |  |  |  | none → 23d | resources none → "Неопласт"; Окно [900%]; Дверь наружная |
| 20 | Установка полов |  |  |  | none → 25d | resources none → Плотник1; Плотник2; Доска обрезная [10 м3]; Доставка [0.1%] |
| 21 | Каркас готов | 2015-02-13 → 2015-02-12 (-1d) | 2015-02-13 → 2015-02-12 (-1d) |  | none → 0d |  |
| 22 | **Коммуникации** | 2014-03-01 → 2015-02-12 (+348d) | 2014-03-01 → 2015-02-26 (+362d) | 1d? → 10d | none → 0d |  |
| 23 | Начало установки коммуникаций | 2015-02-13 → 2015-02-12 (-1d) | 2015-02-13 → 2015-02-12 (-1d) |  | none → 0d |  |
| 24 | Проведение и подключение водопровода и канализации |  |  |  | none → 0d | resources none → Водопроводчик1; Водопроводчик2; Труба водопроводная; Труба канализационная |
| 25 | Установка и подключение электропроводки |  |  |  | none → 5d | resources none → Электрик; Электросчетчик; Электропровод |
| 26 | Установка и подключение газовых коммуникаций |  |  |  | none → 5d | resources none → АО "Газовик"; Труба газовая |
| 27 | Коммуникации готовы | 2015-02-27 → 2015-02-26 (-1d) | 2015-02-27 → 2015-02-26 (-1d) |  | none → 0d |  |
| 28 | **Внутренняя отделка** | 2014-03-01 → 2015-02-26 (+362d) | 2014-03-01 → 2015-04-23 (+418d) | 1d? → 40d | none → 0d |  |
| 29 | Начало отделки | 2015-02-27 → 2015-02-26 (-1d) | 2015-02-27 → 2015-02-26 (-1d) |  | none → 0d |  |
| 30 | Внутренние двери |  |  |  | none → 0d | resources none → Плотник1; Плотник2; Дверь внутренняя [1000%]; Доставка [0.1%] |
| 31 | Навесные потолки |  |  |  | none → 5d | resources none → ООО "Потолки"; Потолок [190 м2] |
| 32 | Отделка стен |  |  |  | none → 12d | resources none → Рабочий1; Рабочий2; Рабочий3; Подсобник1; Подсобник2; Штукатурка |
| 33 | Монтаж отопления |  |  |  | none → 0d | resources none → Водопроводчик1; Водопроводчик2; Труба отопительная |
| 34 | Установка оборудования, приборов и сантехники |  |  |  | none → 0d | resources none → Водопроводчик1; Водопроводчик2; Котел; Печь газовая; Ванна; Унитаз компакт [200%]; Раковина [300%]; Кран [400%] |
| 35 | Настил полов |  |  |  | none → 0d | resources none → Рабочий1; Рабочий2; Рабочий3; Подсобник1; Подсобник2; Паркет [190 м2] |
| 36 | Конец отделки | 2015-04-24 → 2015-04-23 (-1d) | 2015-04-24 → 2015-04-23 (-1d) |  | none → 0d |  |
| 37 | Конец проекта | 2015-04-24 → 2015-04-23 (-1d) | 2015-04-24 → 2015-04-23 (-1d) |  | none → 0d |  |

## Version 3 (saved 2021-05-13, file Тема6_Сверхур.mpp)

Note of the change: 6'th AVM+ 7'th TRPO

Last finish stays 2015-04-23.

Changed:

| ID | Task | Start | Duration |
| --- | --- | --- | --- |
| 20 | Установка полов | 2014-12-23 → 2014-12-22 (-1d) | 5d → 0d |

## Version 4 (saved 2021-05-14, file Тема6_Ограничения.mpp)

Note of the change: 6'th AVM+ 7'th TRPO

Last finish stays 2015-04-23.

Changed:

| ID | Task | Start | Finish | Total float | Other |
| --- | --- | --- | --- | --- | --- |
| 32 | Отделка стен | 2015-03-13 → 2015-03-31 (+18d) | 2015-03-17 → 2015-04-02 (+16d) | 12d → 0d | constraint none → as late as possible |

## Version 5 (saved 2021-05-21, file Тема7_1.mpp)

Note of the change: 8th TRPO

Last finish 2015-04-23 → 2015-04-30 (+7d).

Changed:

| ID | Task | Start | Finish | Duration | Total float | Other |
| --- | --- | --- | --- | --- | --- | --- |
| 14 | **Каркас и крыша** |  | 2015-02-12 → 2015-02-19 (+7d) | 105d → 110d |  |  |
| 20 | Установка полов | 2014-12-22 → 2015-02-13 (+53d) | 2014-12-29 → 2015-02-19 (+52d) | 0d → 5d | 25d → 0d |  |
| 21 | Каркас готов | 2015-02-12 → 2015-02-19 (+7d) | 2015-02-12 → 2015-02-19 (+7d) |  |  |  |
| 22 | **Коммуникации** | 2015-02-12 → 2015-02-19 (+7d) | 2015-02-26 → 2015-03-05 (+7d) |  |  |  |
| 23 | Начало установки коммуникаций | 2015-02-12 → 2015-02-19 (+7d) | 2015-02-12 → 2015-02-19 (+7d) |  |  |  |
| 24 | Проведение и подключение водопровода и канализации | 2015-02-13 → 2015-02-20 (+7d) | 2015-02-26 → 2015-03-05 (+7d) |  |  |  |
| 25 | Установка и подключение электропроводки | 2015-02-13 → 2015-02-20 (+7d) | 2015-02-19 → 2015-02-26 (+7d) |  |  |  |
| 26 | Установка и подключение газовых коммуникаций | 2015-02-13 → 2015-02-20 (+7d) | 2015-02-19 → 2015-02-26 (+7d) |  |  |  |
| 27 | Коммуникации готовы | 2015-02-26 → 2015-03-05 (+7d) | 2015-02-26 → 2015-03-05 (+7d) |  |  |  |
| 28 | **Внутренняя отделка** | 2015-02-26 → 2015-03-05 (+7d) | 2015-04-23 → 2015-04-30 (+7d) |  |  |  |
| 29 | Начало отделки | 2015-02-26 → 2015-03-05 (+7d) | 2015-02-26 → 2015-03-05 (+7d) |  |  |  |
| 30 | Внутренние двери | 2015-02-27 → 2015-03-06 (+7d) | 2015-03-12 → 2015-03-19 (+7d) |  |  |  |
| 31 | Навесные потолки | 2015-03-13 → 2015-03-20 (+7d) | 2015-03-19 → 2015-03-26 (+7d) |  |  |  |
| 32 | Отделка стен | 2015-03-31 → 2015-03-20 (-11d) | 2015-04-02 → 2015-03-24 (-9d) |  | 0d → 12d | constraint as late as possible → none |
| 33 | Монтаж отопления | 2015-03-13 → 2015-03-20 (+7d) | 2015-03-26 → 2015-04-02 (+7d) |  |  |  |
| 34 | Установка оборудования, приборов и сантехники | 2015-03-27 → 2015-04-03 (+7d) | 2015-04-02 → 2015-04-09 (+7d) |  |  |  |
| 35 | Настил полов | 2015-04-03 → 2015-04-10 (+7d) | 2015-04-23 → 2015-04-30 (+7d) |  |  |  |
| 36 | Конец отделки | 2015-04-23 → 2015-04-30 (+7d) | 2015-04-23 → 2015-04-30 (+7d) |  |  |  |
| 37 | Конец проекта | 2015-04-23 → 2015-04-30 (+7d) | 2015-04-23 → 2015-04-30 (+7d) |  |  |  |

## Version 6 (saved 2021-05-21, file Тема7_5.mpp)

Note of the change: 8th TRPO

Last finish 2015-04-30 → 2015-04-23 (-7d).

Changed:

| ID | Task | Start | Finish | Duration | Total float | Other |
| --- | --- | --- | --- | --- | --- | --- |
| 14 | **Каркас и крыша** |  | 2015-02-19 → 2015-02-12 (-7d) | 110d → 105d |  |  |
| 20 | Установка полов | 2015-02-13 → 2014-12-22 (-53d) | 2015-02-19 → 2014-12-29 (-52d) | 5d → 0d | 0d → 25d |  |
| 21 | Каркас готов | 2015-02-19 → 2015-02-12 (-7d) | 2015-02-19 → 2015-02-12 (-7d) |  |  |  |
| 22 | **Коммуникации** | 2015-02-19 → 2015-02-12 (-7d) | 2015-03-05 → 2015-02-26 (-7d) |  |  |  |
| 23 | Начало установки коммуникаций | 2015-02-19 → 2015-02-12 (-7d) | 2015-02-19 → 2015-02-12 (-7d) |  |  |  |
| 24 | Проведение и подключение водопровода и канализации | 2015-02-20 → 2015-02-13 (-7d) | 2015-03-05 → 2015-02-26 (-7d) |  |  |  |
| 25 | Установка и подключение электропроводки | 2015-02-20 → 2015-02-13 (-7d) | 2015-02-26 → 2015-02-19 (-7d) |  |  |  |
| 26 | Установка и подключение газовых коммуникаций | 2015-02-20 → 2015-02-13 (-7d) | 2015-02-26 → 2015-02-19 (-7d) |  |  |  |
| 27 | Коммуникации готовы | 2015-03-05 → 2015-02-26 (-7d) | 2015-03-05 → 2015-02-26 (-7d) |  |  |  |
| 28 | **Внутренняя отделка** | 2015-03-05 → 2015-02-26 (-7d) | 2015-04-30 → 2015-04-23 (-7d) |  |  |  |
| 29 | Начало отделки | 2015-03-05 → 2015-02-26 (-7d) | 2015-03-05 → 2015-02-26 (-7d) |  |  |  |
| 30 | Внутренние двери | 2015-03-06 → 2015-02-27 (-7d) | 2015-03-19 → 2015-03-12 (-7d) |  |  |  |
| 31 | Навесные потолки | 2015-03-20 → 2015-03-13 (-7d) | 2015-03-26 → 2015-03-19 (-7d) |  |  |  |
| 32 | Отделка стен | 2015-03-20 → 2015-03-31 (+11d) | 2015-03-24 → 2015-04-02 (+9d) |  | 12d → 0d | constraint none → as late as possible |
| 33 | Монтаж отопления | 2015-03-20 → 2015-03-13 (-7d) | 2015-04-02 → 2015-03-26 (-7d) |  |  |  |
| 34 | Установка оборудования, приборов и сантехники | 2015-04-03 → 2015-03-27 (-7d) | 2015-04-09 → 2015-04-02 (-7d) |  |  |  |
| 35 | Настил полов | 2015-04-10 → 2015-04-03 (-7d) | 2015-04-30 → 2015-04-23 (-7d) |  |  |  |
| 36 | Конец отделки | 2015-04-30 → 2015-04-23 (-7d) | 2015-04-30 → 2015-04-23 (-7d) |  |  |  |
| 37 | Конец проекта | 2015-04-30 → 2015-04-23 (-7d) | 2015-04-30 → 2015-04-23 (-7d) |  |  |  |

## Version 7 (saved 2021-05-21, file Тема7_3.mpp)

Note of the change: 8th TRPO

Last finish stays 2015-04-23.

Changed:

| ID | Task | Start | Finish | Duration | Total float | Other |
| --- | --- | --- | --- | --- | --- | --- |
| 20 | Установка полов |  |  | 0d → 5d |  | resources Плотник1; Плотник2; Доска обрезная [10 м3]; Доставка [0.1%] → Плотник1; Плотник2; Доска обрезная [10 м3]; Доставка [0.1%]; Рабочий1; Рабочий2 |
| 32 | Отделка стен | 2015-03-31 → 2015-03-13 (-18d) | 2015-04-02 → 2015-03-17 (-16d) |  | 0d → 12d | constraint as late as possible → none |

## Version 8 (saved 2021-05-21, file Тема7_2.mpp)

Note of the change: 8th TRPO

Last finish 2015-04-23 → 2015-04-30 (+7d).

Changed:

| ID | Task | Start | Finish | Duration | Total float | Predecessors |
| --- | --- | --- | --- | --- | --- | --- |
| 14 | **Каркас и крыша** |  | 2015-02-12 → 2015-02-19 (+7d) | 105d → 110d |  |  |
| 20 | Установка полов | 2014-12-22 → 2015-02-12 (+52d) | 2014-12-29 → 2015-02-19 (+52d) |  | 25d → 0d | 17 → 17, 18 |
| 21 | Каркас готов | 2015-02-12 → 2015-02-19 (+7d) | 2015-02-12 → 2015-02-19 (+7d) |  |  |  |
| 22 | **Коммуникации** | 2015-02-12 → 2015-02-19 (+7d) | 2015-02-26 → 2015-03-05 (+7d) |  |  |  |
| 23 | Начало установки коммуникаций | 2015-02-12 → 2015-02-19 (+7d) | 2015-02-12 → 2015-02-19 (+7d) |  |  |  |
| 24 | Проведение и подключение водопровода и канализации | 2015-02-13 → 2015-02-20 (+7d) | 2015-02-26 → 2015-03-05 (+7d) |  |  |  |
| 25 | Установка и подключение электропроводки | 2015-02-13 → 2015-02-20 (+7d) | 2015-02-19 → 2015-02-26 (+7d) |  |  |  |
| 26 | Установка и подключение газовых коммуникаций | 2015-02-13 → 2015-02-20 (+7d) | 2015-02-19 → 2015-02-26 (+7d) |  |  |  |
| 27 | Коммуникации готовы | 2015-02-26 → 2015-03-05 (+7d) | 2015-02-26 → 2015-03-05 (+7d) |  |  |  |
| 28 | **Внутренняя отделка** | 2015-02-26 → 2015-03-05 (+7d) | 2015-04-23 → 2015-04-30 (+7d) |  |  |  |
| 29 | Начало отделки | 2015-02-26 → 2015-03-05 (+7d) | 2015-02-26 → 2015-03-05 (+7d) |  |  |  |
| 30 | Внутренние двери | 2015-02-27 → 2015-03-06 (+7d) | 2015-03-12 → 2015-03-19 (+7d) |  |  |  |
| 31 | Навесные потолки | 2015-03-13 → 2015-03-20 (+7d) | 2015-03-19 → 2015-03-26 (+7d) |  |  |  |
| 32 | Отделка стен | 2015-03-13 → 2015-03-20 (+7d) | 2015-03-17 → 2015-03-24 (+7d) |  |  |  |
| 33 | Монтаж отопления | 2015-03-13 → 2015-03-20 (+7d) | 2015-03-26 → 2015-04-02 (+7d) |  |  |  |
| 34 | Установка оборудования, приборов и сантехники | 2015-03-27 → 2015-04-03 (+7d) | 2015-04-02 → 2015-04-09 (+7d) |  |  |  |
| 35 | Настил полов | 2015-04-03 → 2015-04-10 (+7d) | 2015-04-23 → 2015-04-30 (+7d) |  |  |  |
| 36 | Конец отделки | 2015-04-23 → 2015-04-30 (+7d) | 2015-04-23 → 2015-04-30 (+7d) |  |  |  |
| 37 | Конец проекта | 2015-04-23 → 2015-04-30 (+7d) | 2015-04-23 → 2015-04-30 (+7d) |  |  |  |

## Version 9 (saved 2021-05-28, file Факт.mpp)

Note of the change: 9-10TRPO

Last finish 2015-04-30 → 2015-04-23 (-7d). Complete tasks 0 → 22.

Changed:

| ID | Task | Start | Finish | Duration | Complete | Total float | Predecessors | Other |
| --- | --- | --- | --- | --- | --- | --- | --- | --- |
| 1 | Начало проекта | 2014-03-01 A | 2014-03-01 A |  | 0% → 100% | 0d → none |  | baseline start none → 2014-03-01; baseline finish none → 2014-03-01 |
| 2 | **Утверждение проектов** | 2014-03-01 A | 2014-07-04 A |  | 0% → 100% | 0d → none |  | baseline start none → 2014-03-01; baseline finish none → 2014-07-04 |
| 3 | Начало утверждения проектов | 2014-03-01 A | 2014-03-01 A |  | 0% → 100% | 0d → none |  | baseline start none → 2014-03-01; baseline finish none → 2014-03-01 |
| 4 | Утверждение проекта на строительство | 2014-03-03 A | 2014-07-04 A |  | 0% → 100% | 0d → none |  | baseline start none → 2014-03-03; baseline finish none → 2014-07-04 |
| 5 | Утверждение проекта на газ | 2014-03-03 A | 2014-07-04 A |  | 0% → 100% | 0d → none |  | baseline start none → 2014-03-03; baseline finish none → 2014-07-04 |
| 6 | Утверждение проекта на водопровод и канализацию | 2014-03-03 A | 2014-05-23 A |  | 0% → 100% | 30d → none |  | baseline start none → 2014-03-03; baseline finish none → 2014-05-23 |
| 7 | Утверждение проекта на отопление | 2014-03-03 A | 2014-07-04 A |  | 0% → 100% | 0d → none |  | baseline start none → 2014-03-03; baseline finish none → 2014-07-04 |
| 8 | Проекты утверждены | 2014-07-04 A | 2014-07-04 A |  | 0% → 100% | 0d → none |  | baseline start none → 2014-07-04; baseline finish none → 2014-07-04 |
| 9 | **Строительство фундамента** | 2014-07-04 A | 2014-09-05 A |  | 0% → 100% | 0d → none |  | baseline start none → 2014-07-04; baseline finish none → 2014-09-05 |
| 10 | Начало закладки фундамента | 2014-07-04 A | 2014-07-04 A |  | 0% → 100% | 0d → none |  | baseline start none → 2014-07-04; baseline finish none → 2014-07-04 |
| 11 | Рытье траншей | 2014-07-07 A | 2014-07-18 → 2014-07-22 A (+4d) |  | 0% → 100% | 0d → none |  | baseline start none → 2014-07-07; baseline finish none → 2014-07-18 |
| 12 | Заливка фундамента | 2014-07-21 A | 2014-07-25 A |  | 0% → 100% | 0d → none |  | baseline start none → 2014-07-21; baseline finish none → 2014-07-25 |
| 13 | Фундамент завершен | 2014-09-05 A | 2014-09-05 A |  | 0% → 100% | 0d → none |  | baseline start none → 2014-09-05; baseline finish none → 2014-09-05 |
| 14 | **Каркас и крыша** | 2014-09-05 A | 2015-02-19 → 2015-02-12 A (-7d) | 110d → 105d | 0% → 100% | 0d → none |  | baseline start none → 2014-09-05; baseline finish none → 2015-02-12 |
| 15 | Начало каркаса | 2014-09-05 A | 2014-09-05 A |  | 0% → 100% | 0d → none |  | baseline start none → 2014-09-05; baseline finish none → 2014-09-05 |
| 16 | Кладка стен | 2014-09-08 A | 2014-12-01 A |  | 0% → 100% | 0d → none |  | baseline start none → 2014-09-08; baseline finish none → 2014-12-01 |
| 17 | Перекрытие стен | 2014-12-02 A | 2014-12-22 A |  | 0% → 100% | 0d → none |  | baseline start none → 2014-12-02; baseline finish none → 2014-12-22 |
| 18 | Установка крыши | 2014-12-23 A | 2015-02-12 A |  | 0% → 100% | 0d → none |  | baseline start none → 2014-12-23; baseline finish none → 2015-02-12 |
| 19 | Установка наружных дверей и окон | 2014-12-23 A | 2015-01-12 A |  | 0% → 100% | 28d → none |  | baseline start none → 2014-12-23; baseline finish none → 2015-01-12 |
| 20 | Установка полов | 2015-02-12 → 2014-12-22 A (-52d) | 2015-02-19 → 2014-12-29 A (-52d) | 5d → 0d | 0% → 100% | 0d → none | 17, 18 → 17 | resources Плотник1; Плотник2; Доска обрезная [10 м3]; Доставка [0.1%]; Рабочий1; Рабочий2 → Плотник1; Плотник2; Доска обрезная [10 м3]; Доставка [0.1%]; baseline start none → 2014-12-22; baseline finish none → 2014-12-29 |
| 21 | Каркас готов | 2015-02-19 → 2015-02-12 A (-7d) | 2015-02-19 → 2015-02-12 A (-7d) |  | 0% → 100% | 0d → none |  | baseline start none → 2015-02-12; baseline finish none → 2015-02-12 |
| 22 | **Коммуникации** | 2015-02-19 → 2015-02-12 A (-7d) | 2015-03-05 → 2015-02-26 (-7d) |  | 0% → 99% | 0d → 40d |  | baseline start none → 2015-02-12; baseline finish none → 2015-02-26 |
| 23 | Начало установки коммуникаций | 2015-02-19 → 2015-02-12 A (-7d) | 2015-02-19 → 2015-02-12 A (-7d) |  | 0% → 100% | 0d → none |  | baseline start none → 2015-02-12; baseline finish none → 2015-02-12 |
| 24 | Проведение и подключение водопровода и канализации | 2015-02-20 → 2015-02-13 A (-7d) | 2015-03-05 → 2015-02-26 A (-7d) |  | 0% → 100% | 0d → none |  | baseline start none → 2015-02-13; baseline finish none → 2015-02-26 |
| 25 | Установка и подключение электропроводки | 2015-02-20 → 2015-02-13 A (-7d) | 2015-02-26 → 2015-02-19 A (-7d) |  | 0% → 100% | 5d → none |  | baseline start none → 2015-02-13; baseline finish none → 2015-02-19 |
| 26 | Установка и подключение газовых коммуникаций | 2015-02-20 → 2015-02-13 A (-7d) | 2015-02-26 → 2015-02-19 (-7d) |  | 0% → 99% | 5d → 45d |  | baseline start none → 2015-02-13; baseline finish none → 2015-02-19 |
| 27 | Коммуникации готовы | 2015-03-05 → 2015-02-26 A (-7d) | 2015-03-05 → 2015-02-26 A (-7d) |  | 0% → 100% | 0d → none |  | baseline start none → 2015-02-26; baseline finish none → 2015-02-26 |
| 28 | **Внутренняя отделка** | 2015-03-05 → 2015-02-26 (-7d) | 2015-04-30 → 2015-04-23 (-7d) |  |  |  |  | baseline start none → 2015-02-26; baseline finish none → 2015-04-23 |
| 29 | Начало отделки | 2015-03-05 → 2015-02-26 (-7d) | 2015-03-05 → 2015-02-26 (-7d) |  |  |  |  | baseline start none → 2015-02-26; baseline finish none → 2015-02-26 |
| 30 | Внутренние двери | 2015-03-06 → 2015-02-27 (-7d) | 2015-03-19 → 2015-03-12 (-7d) |  |  |  |  | baseline start none → 2015-02-27; baseline finish none → 2015-03-12 |
| 31 | Навесные потолки | 2015-03-20 → 2015-03-13 (-7d) | 2015-03-26 → 2015-03-19 (-7d) |  |  |  |  | baseline start none → 2015-03-13; baseline finish none → 2015-03-19 |
| 32 | Отделка стен | 2015-03-20 → 2015-03-31 (+11d) | 2015-03-24 → 2015-04-02 (+9d) |  |  | 12d → 0d |  | constraint none → as late as possible; baseline start none → 2015-03-31; baseline finish none → 2015-04-02 |
| 33 | Монтаж отопления | 2015-03-20 → 2015-03-13 (-7d) | 2015-04-02 → 2015-03-26 (-7d) |  |  |  |  | baseline start none → 2015-03-13; baseline finish none → 2015-03-26 |
| 34 | Установка оборудования, приборов и сантехники | 2015-04-03 → 2015-03-27 (-7d) | 2015-04-09 → 2015-04-02 (-7d) |  |  |  |  | baseline start none → 2015-03-27; baseline finish none → 2015-04-02 |
| 35 | Настил полов | 2015-04-10 → 2015-04-03 (-7d) | 2015-04-30 → 2015-04-23 (-7d) |  |  |  |  | baseline start none → 2015-04-03; baseline finish none → 2015-04-23 |
| 36 | Конец отделки | 2015-04-30 → 2015-04-23 (-7d) | 2015-04-30 → 2015-04-23 (-7d) |  |  |  |  | baseline start none → 2015-04-23; baseline finish none → 2015-04-23 |
| 37 | Конец проекта | 2015-04-30 → 2015-04-23 (-7d) | 2015-04-30 → 2015-04-23 (-7d) |  |  |  |  | baseline start none → 2015-04-23; baseline finish none → 2015-04-23 |
